# Календарный план (2 проекта)

Schedule from MS Project, 2014-01-09 to 2014-12-31, A marks actual dates.

## Calendars

- Стандартный: Mon-Fri 09:00-13:00, 14:00-18:00; Sat-Sun off. Exceptions (off unless hours are given): 2014-03-08 (8 марта), 2014-05-01 to 2014-05-04 (1 мая), 2014-05-09 to 2014-05-11 (9 мая), 2014-06-12 to 2014-06-15 (День России), 2014-11-03 to 2014-11-04 (День народного единства).

## Resources

| Resource |
| --- |
| Антон |
| Оля |
| Света |
| Илья |
| Володя |
| Сергей |
| Кирилл |
| Саша |
| Илья |
| ТОГС |
| Внедренец ГМЦ |
| Заказчик |

## Schedule

| ID | WBS | Task | Type | Duration | Start | Finish | Predecessors | Complete | Remaining | Actual finish | Total slack | Free slack | Constraint | Resources | Work | Actual work |
| --- | --- | --- | --- | --- | --- | --- | --- | --- | --- | --- | --- | --- | --- | --- | --- | --- |
| 1 | 1 | **Проект "Системное сопровождение СЭД"** |  | 248d | 2014-01-09 A | 2014-12-31 |  | 10% | 222.9d |  | 0d |  |  |  | 1952h | 632h |
| 2 | 1.1 | Дата заключения ГК | milestone | 0d | 2014-02-14 | 2014-02-14 |  |  |  |  | 71d | 0d | start no earlier than 2014-02-14 |  |  |  |
| 3 | 1.2 | **1-2 этапы** |  | 45d | 2014-01-30 A | 2014-04-02 |  | 55% | 20.05d |  | 188d |  |  |  | 832h | 472h |
| 4 | 1.2.1 | Организация тестового стенда СЭД |  | 1d | 2014-01-30 A | 2014-01-30 A |  | 100% |  |  |  |  |  |  |  |  |
| 5 | 1.2.2 | **Отказоустойчивость СЭД** |  | 45d | 2014-01-30 A | 2014-04-02 |  | 6% | 42.19d |  | 188d |  |  |  | 384h | 24h |
| 6 | 1.2.2.1 | Отказоустойчивость: Выполнение работ по отказоустойчивости |  | 45d | 2014-01-30 | 2014-04-02 |  |  |  |  | 188d |  |  | Сергей | 360h |  |
| 7 | 1.2.2.2 | Отказоустойчивость: Контрольные задания для ПиМИ |  | 3d | 2014-02-11 A | 2014-02-13 A |  | 100% |  |  |  |  | start no earlier than 2014-02-11 | Оля | 24h | 24h |
| 8 | 1.2.3 | **МЭДО: формирование уведомлений (3 типа)** |  | 12d | 2014-01-30 A | 2014-02-14 A |  | 100% |  |  |  |  |  |  | 184h | 184h |
| 9 | 1.2.3.1 | МЭДО: Контрольные задания для ПиМИ |  | 11d | 2014-01-30 A | 2014-02-13 A |  | 100% |  |  |  |  | start no earlier than 2014-01-30 | Антон | 88h | 88h |
| 10 | 1.2.3.2 | МЭДО: Подготовка к испытаниям |  | 12d | 2014-01-30 A | 2014-02-14 A |  | 100% |  |  |  |  |  | Антон | 96h | 96h |
| 11 | 1.2.4 | **ЗИ: 1-я очередь** |  | 20d | 2014-01-30 A | 2014-02-26 |  | 100% |  | 2014-02-14 |  |  |  |  | 192h | 192h |
| 12 | 1.2.4.1 | ЗИ: Контрольные задания для ПиМИ |  | 12d | 2014-01-30 A | 2014-02-14 A |  | 100% |  |  |  |  |  | Оля | 96h | 96h |
| 13 | 1.2.4.2 | ЗИ: Подготовка к испытаниям |  | 12d | 2014-01-30 A | 2014-02-14 A |  | 100% |  |  |  |  |  | Оля | 96h | 96h |
| 14 | 1.2.5 | Проведение приемочных испытаний |  | 1d | 2014-02-24 A | 2014-02-24 A | 20FS-4d | 100% |  |  |  |  | start no earlier than 2014-02-20 | Антон; Илья; Кирилл; Оля; Света | 40h | 40h |
| 15 | 1.2.6 | **Подготовка отчетной документации (даты передачи документации Заказчику)** |  | 6d | 2014-02-18 A | 2014-02-25 A |  | 100% |  |  |  |  |  |  | 32h | 32h |
| 16 | 1.2.6.1 | Дистрибутив СЭД с реализованными функциональными возможностями (ЗИ) |  | 1d | 2014-02-18 A | 2014-02-18 A |  | 100% |  |  |  |  | start no earlier than 2014-02-18 | Антон | 8h | 8h |
| 17 | 1.2.6.2 | Программа и методика испытаний: ЗИ/МЭДО/Отказоустойчивость |  | 1d | 2014-02-19 A | 2014-02-19 A | 14FF-3d | 100% |  |  |  |  |  | Оля | 8h | 8h |
| 18 | 1.2.6.3 | Протокол приемочных испытаний |  | 1d | 2014-02-25 A | 2014-02-25 A | 14 | 100% |  |  |  |  |  | Оля | 8h | 8h |
| 19 | 1.2.6.4 | Акт сдачи-приемки оказанных услуг |  | 1d | 2014-02-25 A | 2014-02-25 A | 14 | 100% |  |  |  |  |  | Света | 8h | 8h |
| 20 | 1.2.7 | Работы этапов 1-2 сданы и выполнены | milestone | 0d | 2014-02-28 A | 2014-02-28 A | 2FS+2ew | 100% |  |  |  |  |  |  |  |  |
| 21 | 1.3 | **3 этап** |  | 49d | 2014-02-27 A | 2014-05-09 |  | 17% | 40.55d |  | 164d |  |  |  | 656h | 160h |
| 22 | 1.3.1 | Подготовка постановок на ЗИ |  | 10d | 2014-02-27 A | 2014-03-12 A |  | 100% |  |  |  |  | finish no earlier than 2014-03-12 | Оля; Кирилл | 160h | 160h |
| 23 | 1.3.2 | Реализация ЗИ 2-ая очередь |  | 20d | 2014-03-14 | 2014-04-11 | 24SF |  |  |  | 182d |  |  | Володя | 160h |  |
| 24 | 1.3.3 | Разработка ПИМИ |  | 10d | 2014-04-11 | 2014-04-25 | 26SF |  |  |  | 172d | 0d |  | Кирилл | 80h |  |
| 25 | 1.3.4 | Подготовка к испытаниям |  | 10d | 2014-04-11 | 2014-04-25 | 26SF |  |  |  | 172d |  |  | Илья; Антон | 160h |  |
| 26 | 1.3.5 | Проведение приемочных испытаний |  | 1d | 2014-04-25 | 2014-04-25 |  |  |  |  | 168d | 0d | start no earlier than 2014-04-25 | Антон; Илья; Света; Кирилл; Оля | 40h |  |

| ID | WBS | Task | Type | Duration | Start | Finish | Predecessors | Total slack | Free slack | Resources | Work |
| --- | --- | --- | --- | --- | --- | --- | --- | --- | --- | --- | --- |
| 27 | 1.3.6 | **Подготовка отчетной документации (даты передачи документации Заказчику)** |  | 3d | 2014-04-28 | 2014-04-30 |  | 168d |  |  | 56h |
| 28 | 1.3.6.1 | Дистрибутив СЭД с реализованными функциональными возможностями |  | 1d | 2014-04-28 | 2014-04-28 | 26 | 170d |  | Антон | 8h |
| 29 | 1.3.6.2 | Программа и методика испытаний. |  | 3d | 2014-04-28 | 2014-04-30 | 26 | 168d |  | Антон | 24h |
| 30 | 1.3.6.3 | Протокол приемочных испытаний. |  | 1d | 2014-04-28 | 2014-04-28 | 26 | 170d |  | Илья | 8h |
| 31 | 1.3.6.4 | Акт приемки в ОФАП Росстата |  | 1d | 2014-04-28 | 2014-04-28 | 26 | 170d |  | Илья | 8h |
| 32 | 1.3.6.5 | Акт сдачи-приемки оказанных услуг |  | 1d | 2014-04-28 | 2014-04-28 | 26 | 170d |  | Света | 8h |
| 33 | 1.3.7 | Работы этапа 3 сданы | milestone | 0d | 2014-05-09 | 2014-05-09 | 2FS+12ew | 71d | 0d |  |  |
| 34 | 1.4 | **4 этап "Тиражирование СЭД в территориальных органах Росстата"** |  | 92d | 2014-05-12 | 2014-09-19 |  | 72d |  |  | 464h |
| 35 | 1.4.1 | **Общетиражные работы** |  | 10d | 2014-05-12 | 2014-05-23 |  | 76d |  | Илья | 80h |
| 36 | 1.4.1.1 | Сбор данных по ОШС со всех ТОГС |  | 5d | 2014-05-12 | 2014-05-16 | 33 | 75d | 0d |  |  |
| 37 | 1.4.1.2 | Подготовка и согласование опросного листа |  | 2d | 2014-05-12 | 2014-05-13 | 33 | 162d |  |  |  |
| 38 | 1.4.1.3 | Подготовка краткого руководства для руководителя / регистратора / исполнителя |  | 3d | 2014-05-12 | 2014-05-14 | 33 | 159d | 0d |  |  |
| 39 | 1.4.1.4 | Тестовые задания для выполнения (кейсы): для руководителя / регистратора / исполнителя |  | 1d | 2014-05-15 | 2014-05-15 | 38 | 159d | 0d |  |  |
| 40 | 1.4.1.5 | Тест из 10-12 простых вопросов по знанию СЭД |  | 1d | 2014-05-16 | 2014-05-16 | 39 | 159d |  |  |  |
| 41 | 1.4.1.6 | Подготовка презентационных материалов для очной подготовки персонала |  | 2d | 2014-05-12 | 2014-05-13 | 33 | 162d |  |  |  |
| 42 | 1.4.1.7 | Создание ОШС на продуктиве СЭД по 5 ТОГС |  | 4d | 2014-05-19 | 2014-05-22 | 36 | 75d | 0d |  |  |
| 43 | 1.4.1.8 | Перенос дампа на тестовую среду |  | 1d | 2014-05-23 | 2014-05-23 | 42 | 75d | 0d |  |  |
| 44 | 1.4.2 | **Удмуртиястат** |  | 39d | 2014-05-23 | 2014-07-21 |  | 115d |  |  | 384h |
| 45 | 1.4.2.1 | Старт тиража в ТОГС | milestone | 0d | 2014-05-23 | 2014-05-23 | 43 | 75d | 0d |  |  |
| 46 | 1.4.2.2 | **Подготовительные мероприятия** |  | 16d | 2014-05-26 | 2014-06-18 |  | 115d |  |  | 128h |
| 47 | 1.4.2.2.1 | Отправка в ТОГС письма о старте проекта + Опросный лист |  | 1d | 2014-05-26 | 2014-05-26 | 45 | 75d | 0d | Илья | 8h |
| 48 | 1.4.2.2.2 | Согласование и уточнение настроек справочников с ТОГС |  | 5d | 2014-05-27 | 2014-06-02 | 47 | 138d | 0d | Илья; ТОГС | 80h |
| 49 | 1.4.2.2.3 | Настройка справочников на продуктиве: Сотрудники, Наименование должностей, ОШС, Шаблоны документов, Помощники, Наименования видов документов, Номенклатура дел |  | 10d | 2014-06-03 | 2014-06-18 | 48, 52 | 138d |  | Внедренец ГМЦ [50%] | 40h |
| 50 | 1.4.2.3 | **Подготовка персонала** |  | 15d | 2014-05-27 | 2014-06-18 |  | 115d |  |  | 80h |
| 51 | 1.4.2.3.1 | Подготовка тестовой среды для обучения: проверяется ОШС, создаются тестовые шаблоны, номенклатура. Проверка обучающих кейсов на выполнимость на стенде |  | 2d | 2014-05-27 | 2014-05-28 | 47 | 75d | 0d | Внедренец ГМЦ | 16h |
| 52 | 1.4.2.3.2 | Создание учетных записей на тестовом стенде для обучения |  | 2d | 2014-05-29 | 2014-05-30 | 51 | 75d | 0d | Внедренец ГМЦ | 16h |
| 53 | 1.4.2.3.3 | Отправка в ТОГС письма о начале обучения + Тестовые задания и материалы для обучения | milestone | 0d | 2014-05-30 | 2014-05-30 | 52 | 115d | 0d | Внедренец ГМЦ |  |
| 54 | 1.4.2.3.4 | Проверка выполнения тестовых заданий внедрением (правильность выполнения кейса и ответы на тест) |  | 10d | 2014-06-02 | 2014-06-17 | 53 | 139d |  | Внедренец ГМЦ [25%] | 20h |
| 55 | 1.4.2.3.5 | Консультирование пользователей по содержанию руководств, тестовым заданиям, функциональности СЭД на протяжении всего процесса обучения |  | 10d | 2014-06-02 | 2014-06-17 | 53 | 115d | 0d | Внедренец ГМЦ [25%] | 20h |
| 56 | 1.4.2.3.6 | Подведение итогов обучения, предоставление руководству итоговой сводной информации |  | 1d | 2014-06-18 | 2014-06-18 | 55 | 115d | 0d | Внедренец ГМЦ | 8h |

| ID | WBS | Task | Type | Duration | Start | Finish | Predecessors | Total slack | Free slack | Constraint | Resources | Work |
| --- | --- | --- | --- | --- | --- | --- | --- | --- | --- | --- | --- | --- |
| 57 | 1.4.2.4 | **Опытная эксплуатация** |  | 17d | 2014-06-18 | 2014-07-11 |  | 115d |  |  |  | 120h |
| 58 | 1.4.2.4.1 | Отправка в ТОГС письма о начале ОЭ | milestone | 0d | 2014-06-18 | 2014-06-18 | 56 | 115d | 0d |  | Илья; Заказчик |  |
| 59 | 1.4.2.4.2 | Очный семинар на территории ТОГС |  | 1d | 2014-06-23 | 2014-06-23 | 58FS+2d | 115d | 0d |  | Внедренец ГМЦ | 8h |
| 60 | 1.4.2.4.3 | Сопровождение эксплуатации СЭД в период ОЭ в ТОГС (очное присутствие на территории) |  | 4d | 2014-06-24 | 2014-06-27 | 59 | 115d | 0d |  | Внедренец ГМЦ | 32h |
| 61 | 1.4.2.4.4 | Сопровождение эксплуатации СЭД в период ОЭ в ТОГС (удаленное консультирование по телефону) |  | 10d | 2014-06-30 | 2014-07-11 | 60 | 115d | 0d |  | Внедренец ГМЦ | 80h |
| 62 | 1.4.2.5 | **Отчетность** |  | 1d | 2014-07-14 | 2014-07-14 |  | 115d |  |  | Внедренец ГМЦ | 16h |
| 63 | 1.4.2.5.1 | Журнал ОЭ в ТОГС |  | 1d | 2014-07-14 | 2014-07-14 | 61 | 115d | 0d |  | Внедренец ГМЦ | 8h |
| 64 | 1.4.2.6 | Запуск СЭД в ПЭ в ТОГС |  | 5d | 2014-07-15 | 2014-07-21 | 63 | 115d |  |  | Заказчик | 40h |
| 65 | 1.4.3 | Тюменьстат |  | 39d | 2014-06-06 | 2014-08-01 | 42FS+10d | 106d |  |  |  |  |
| 66 | 1.4.4 | Волгоградстат |  | 39d | 2014-06-24 | 2014-08-15 | 42FS+20d | 96d |  |  |  |  |
| 67 | 1.4.5 | Самарастат |  | 39d | 2014-07-08 | 2014-08-29 | 42FS+30d | 86d |  |  |  |  |
| 68 | 1.4.6 | Омскстат |  | 39d | 2014-07-22 | 2014-09-12 | 42FS+40d | 76d |  |  |  |  |
| 69 | 1.4.7 | Работы этапа 4 сданы | milestone | 0d | 2014-09-19 | 2014-09-19 | 33FS+19ew | 72d |  |  |  |  |
| 70 | 1.5 | **5 этап (Сопровождение СЭД в ЦА и ТОГС), 1 кв. 2014 г.** |  | 58d | 2014-01-09 | 2014-03-31 |  | 0d |  |  |  |  |
| 71 | 1.5.1 | Системное сопровождение СЭД (1 квартал 2014) |  | 58d | 2014-01-09 | 2014-03-31 |  | 0d |  | start no earlier than 2014-01-09 |  |  |
| 72 | 1.5.2 | Ежеквартальный отчет о сопровождении системы электронного документооборота ИВС Росстата. |  | 1d | 2014-03-25 | 2014-03-25 | 71FS-5d | 194d |  |  |  |  |
| 73 | 1.5.3 | Акт сдачи-приемки оказанных услуг |  | 1d | 2014-03-25 | 2014-03-25 | 71FS-5d | 194d |  |  |  |  |
| 74 | 1.6 | **6 этап (Сопровождение СЭД в ЦА и ТОГС), 2 кв. 2014 г.** |  | 60d | 2014-04-01 | 2014-06-30 |  | 0d |  |  |  |  |
| 75 | 1.6.1 | Системное сопровождение СЭД (1 квартал 2014) |  | 60d | 2014-04-01 | 2014-06-30 | 71 | 0d |  |  |  |  |
| 76 | 1.6.2 | Ежеквартальный отчет о сопровождении системы электронного документооборота ИВС Росстата. |  | 1d | 2014-06-24 | 2014-06-24 | 75FS-5d | 134d |  |  |  |  |
| 77 | 1.6.3 | Акт сдачи-приемки оказанных услуг |  | 1d | 2014-06-24 | 2014-06-24 | 75FS-5d | 134d |  |  |  |  |
| 78 | 1.7 | **7 этап (Сопровождение СЭД в ЦА и ТОГС), 3 кв. 2014 г.** |  | 66d | 2014-07-01 | 2014-09-30 |  | 0d |  |  |  |  |
| 79 | 1.7.1 | Системное сопровождение СЭД (1 квартал 2014) |  | 66d | 2014-07-01 | 2014-09-30 | 75 | 0d |  |  |  |  |
| 80 | 1.7.2 | Ежеквартальный отчет о сопровождении системы электронного документооборота ИВС Росстата. |  | 1d | 2014-09-24 | 2014-09-24 | 79FS-5d | 68d |  |  |  |  |
| 81 | 1.7.3 | Акт сдачи-приемки оказанных услуг |  | 1d | 2014-09-24 | 2014-09-24 | 79FS-5d | 68d |  |  |  |  |

| ID | WBS | Task | Type | Duration | Start | Finish | Predecessors | Complete | Remaining | Total slack | Constraint | Resources | Work | Actual work |
| --- | --- | --- | --- | --- | --- | --- | --- | --- | --- | --- | --- | --- | --- | --- |
| 82 | 1.8 | **8 этап (Сопровождение СЭД в ЦА и ТОГС), 4 кв. 2014 г.** |  | 64d | 2014-10-01 | 2014-12-31 |  |  |  | 0d |  |  |  |  |
| 83 | 1.8.1 | Системное сопровождение СЭД (1 квартал 2014) |  | 64d | 2014-10-01 | 2014-12-31 | 79 |  |  | 0d |  |  |  |  |
| 84 | 1.8.2 | Ежеквартальный отчет о сопровождении системы электронного документооборота ИВС Росстата. |  | 1d | 2014-12-11 | 2014-12-11 | 83FS-15d |  |  | 14d |  |  |  |  |
| 85 | 1.8.3 | Акт сдачи-приемки оказанных услуг |  | 1d | 2014-12-11 | 2014-12-11 | 83FS-15d |  |  | 14d |  |  |  |  |
| 87 | 2 | **Проект "Сопровождение МСС (Сквозные / МЭДО-обращения граждан)"** |  | 92d? | 2014-01-30 A | 2014-06-13 |  | 73% | 24.74d? | 141d |  |  | 2264h | 1840h |
| 88 | 2.1 | Дата заключения ГК | milestone | 0d | 2014-02-14 | 2014-02-14 |  |  |  | 222d | start no earlier than 2014-02-14 |  |  |  |
| 89 | 2.2 | **1 этап** |  | 21d | 2014-01-30 A | 2014-02-28 A |  | 100% |  |  |  |  | 496h | 496h |
| 90 | 2.2.1 | **Подготовка к демонстрации прототипа** |  | 16d | 2014-01-30 A | 2014-02-20 A |  | 100% |  |  |  | Оля | 448h | 448h |
| 91 | 2.2.1.1 | Подготовка стенда |  | 4d | 2014-01-30 A | 2014-02-04 A |  | 100% |  |  |  | Антон | 32h | 32h |
| 92 | 2.2.1.2 | Подготовка списка необходимых изменений |  | 3d | 2014-02-05 A | 2014-02-07 A | 91 | 100% |  |  |  | Кирилл; Антон; Оля | 72h | 72h |
| 93 | 2.2.1.3 | Подготовить проект замечаний |  | 2d | 2014-02-12 A | 2014-02-13 A |  | 100% |  |  | start no earlier than 2014-02-12 | Кирилл | 16h | 16h |
| 94 | 2.2.1.4 | Подготовка проекта Регламента с учетом сквозных |  | 11d | 2014-02-06 A | 2014-02-20 A |  | 100% |  |  | start no earlier than 2014-02-06 | Кирилл | 88h | 88h |
| 95 | 2.2.1.5 | Реализация изменений |  | 3d | 2014-02-10 A | 2014-02-12 A | 92 | 100% |  |  |  | Володя | 24h | 24h |
| 96 | 2.2.1.6 | Проверка реализации изменений на стенде КРОК |  | 4d | 2014-02-13 A | 2014-02-18 A | 95 | 100% |  |  |  | Антон | 32h | 32h |
| 97 | 2.2.1.7 | Проверка реализации изменений на стенде Росстата |  | 1d | 2014-02-19 A | 2014-02-19 A | 96 | 100% |  |  |  | Кирилл | 8h | 8h |
| 98 | 2.2.1.8 | Подготовка к испытаниям |  | 6d | 2014-02-13 A | 2014-02-20 A | 95 | 100% |  |  |  | Оля | 48h | 48h |
| 99 | 2.2.2 | Проведение демонстрации прототипа |  | 1d | 2014-02-26 A | 2014-02-26 A | 104FF-1d | 100% |  |  | start no earlier than 2014-02-21 | Антон; Оля; Света; Илья; Кирилл | 40h | 40h |
| 100 | 2.2.3 | **Подготовка отчетной документации (даты передачи документации Заказчику)** |  | 7d | 2014-02-18 A | 2014-02-26 A |  | 100% |  |  |  |  | 8h | 8h |
| 101 | 2.2.3.1 | Дистрибутив прототипа механизма передачи информации и документов между ЦА Росстата и ТОГС. |  | 1d | 2014-02-18 A | 2014-02-18 A |  | 100% |  |  | start no earlier than 2014-02-18 | Антон | 8h | 8h |
| 102 | 2.2.3.2 | Протокол проведения демонстрации прототипа. | milestone | 0d | 2014-02-26 A | 2014-02-26 A | 99 | 100% |  |  |  | Оля |  |  |
| 103 | 2.2.3.3 | Акт сдачи-приемки оказанных услуг. | milestone | 0d | 2014-02-26 A | 2014-02-26 A | 99 | 100% |  |  |  | Света |  |  |
| 104 | 2.2.4 | Закрытие этапа | milestone | 0d | 2014-02-28 A | 2014-02-28 A | 88FS+2ew | 100% |  |  |  |  |  |  |
| 105 | 2.3 | **2 этап** |  | 36d | 2014-01-30 A | 2014-03-21 A |  | 100% |  |  |  |  | 1304h | 1304h |
| 106 | 2.3.1 | Перевод СЭД Росстата на ЕОСДО 2.1 |  | 34d | 2014-02-03 A | 2014-03-20 A |  | 100% |  |  | start no earlier than 2014-02-03 | Володя | 272h | 272h |
| 107 | 2.3.2 | Реализация доработки МЭДО-обращения граждан |  | 10d | 2014-01-30 A | 2014-02-12 A |  | 100% |  |  |  | Володя | 80h | 80h |
| 108 | 2.3.3 | Проверка доработки МЭДО-обращения граждан |  | 4d | 2014-02-27 A | 2014-03-04 A | 99 | 100% |  |  |  | Антон; Илья | 64h | 64h |
| 109 | 2.3.4 | Подготовка патча. Правка ошибки: некорректно проставляется корреспондент |  | 4d | 2014-03-06 A | 2014-03-11 A |  | 100% |  |  | start no earlier than 2014-03-06 | Володя | 32h | 32h |
| 110 | 2.3.5 | Реализация необходимых изменений в 2.1 для ПСИ (цвет организаций и ошибка в журналах) |  | 7d | 2014-03-06 A | 2014-03-14 A | 114 | 100% |  |  |  | Володя | 56h | 56h |
| 111 | 2.3.6 | Поставить ВИП клиент 2.1 в Росстате |  | 3d | 2014-02-27 A | 2014-03-03 A | 99 | 100% |  |  | start no earlier than 2014-02-06 | Антон | 24h | 24h |
| 112 | 2.3.7 | Поиск ошибок вип клиента |  | 3d | 2014-03-04 A | 2014-03-06 A | 111 | 100% |  |  |  | Кирилл | 24h | 24h |
| 113 | 2.3.8 | Разработка расширенного сценария показа |  | 10d | 2014-02-06 A | 2014-02-19 A |  | 100% |  |  | start no earlier than 2014-02-06 | Кирилл | 80h | 80h |
| 114 | 2.3.9 | Поиск ошибок |  | 20d | 2014-02-06 A | 2014-03-05 A |  | 100% |  |  | start no earlier than 2014-02-06 | Кирилл | 160h | 160h |
| 115 | 2.3.10 | Разработка ПИМИ (сквозные, МЭДО обращения граждан) |  | 20d | 2014-02-07 A | 2014-03-06 A |  | 100% |  |  | start no earlier than 2014-02-07 | Антон; Оля | 320h | 320h |
| 116 | 2.3.11 | Решение вопроса неработоспособности текущей версии ВИП клиента |  | 3d | 2014-02-13 A | 2014-02-17 A |  | 100% |  |  | start no earlier than 2014-02-13 | Володя; Сергей | 48h | 48h |
| 117 | 2.3.12 | Проведение предварительных испытаний |  | 1d | 2014-03-19 A | 2014-03-19 A | 124FS-4d | 100% |  |  | start no earlier than 2014-03-19 | Антон; Илья; Оля; Света | 32h | 32h |

| ID | WBS | Task | Type | Duration | Start | Finish | Predecessors | Complete | Remaining | Total slack | Free slack | Resources | Work | Actual work |
| --- | --- | --- | --- | --- | --- | --- | --- | --- | --- | --- | --- | --- | --- | --- |
| 118 | 2.3.13 | **Подготовка отчетной документации (даты передачи документации Заказчику)** |  | 14d | 2014-03-03 A | 2014-03-20 A |  | 100% |  |  |  |  | 112h | 112h |
| 119 | 2.3.13.1 | Дистрибутив механизмов обмена и передачи информации и документов |  | 1d | 2014-03-20 A | 2014-03-20 A | 117 | 100% |  |  |  | Антон | 8h | 8h |
| 120 | 2.3.13.2 | Программа и методика испытаний |  | 10d | 2014-03-03 A | 2014-03-14 A | 117FF-3d | 100% |  |  |  | Оля | 80h | 80h |
| 121 | 2.3.13.3 | Протокол предварительных испытаний |  | 1d | 2014-03-20 A | 2014-03-20 A | 117 | 100% |  |  |  | Оля | 8h | 8h |
| 122 | 2.3.13.4 | Акт приемки в опытную эксплуатацию |  | 1d | 2014-03-20 A | 2014-03-20 A | 117 | 100% |  |  |  | Оля | 8h | 8h |
| 123 | 2.3.13.5 | Акт сдачи-приемки оказанных услуг |  | 1d | 2014-03-20 A | 2014-03-20 A | 117 | 100% |  |  |  | Света | 8h | 8h |
| 124 | 2.3.14 | Закрытие этапа | milestone | 0d | 2014-03-21 A | 2014-03-21 A | 88FS+5ew | 100% |  |  |  |  |  |  |
| 125 | 2.4 | **3 этап "Подготовка к опытной эксплуатации реализованных механизмов обмена и передачи информации и документов"** |  | 42d | 2014-03-21 A | 2014-05-22 |  | 9% | 38.38d | 155d |  |  | 464h | 40h |
| 126 | 2.4.1 | Стаблизация функциональности 2.1 |  | 32d | 2014-03-21 | 2014-05-07 | 124 |  |  | 155d | 0d | Володя | 256h |  |
| 127 | 2.4.2 | Подготовка целевой постановки на цветовую раскраску наименований организаций |  | 5d | 2014-03-21 A | 2014-03-27 A | 124 | 100% |  |  |  | Оля | 40h | 40h |
| 128 | 2.4.3 | Миграция данных, обновление продуктива |  | 10d | 2014-05-08 | 2014-05-22 | 126 |  |  | 155d |  | Володя | 80h |  |
| 129 | 2.4.4 | Проведение обучения |  | 5d | 2014-05-08 | 2014-05-15 | 126 |  |  | 159d | 0d | Илья | 40h |  |
| 130 | 2.4.5 | **Подготовка отчетной документации** |  | 1d | 2014-05-16 | 2014-05-16 |  |  |  | 159d |  |  | 48h |  |
| 131 | 2.4.5.1 | Регламент (проект) по работе с организационно-распорядительными документами в системе электронного документооборота |  | 1d | 2014-05-16 | 2014-05-16 | 129 |  |  | 159d |  | Илья | 8h |  |
| 132 | 2.4.5.2 | Руководство пользователя |  | 1d | 2014-05-16 | 2014-05-16 | 129 |  |  | 159d |  | Кирилл | 8h |  |
| 133 | 2.4.5.3 | Руководство администратора |  | 1d | 2014-05-16 | 2014-05-16 | 129 |  |  | 159d |  | Кирилл | 8h |  |
| 134 | 2.4.5.4 | Отчет о проведении подготовки персонала Заказчика |  | 1d | 2014-05-16 | 2014-05-16 | 129 |  |  | 159d |  | Илья | 8h |  |
| 135 | 2.4.5.5 | Программа опытной эксплуатации |  | 1d | 2014-05-16 | 2014-05-16 | 129 |  |  | 159d |  | Илья | 8h |  |
| 136 | 2.4.5.6 | Акт сдачи-приемки оказанных услуг |  | 1d | 2014-05-16 | 2014-05-16 | 129 |  |  | 159d |  | Света | 8h |  |
| 137 | 2.4.6 | Закрытие этапа | milestone | 0d | 2014-05-16 | 2014-05-16 | 124FS+8ew |  |  | 140d | 0d |  |  |  |
| 138 | 2.5 | **4 этап** |  | 92d? | 2014-01-30 | 2014-06-13 |  |  |  | 141d |  |  |  |  |
| 139 | 2.5.1 | Участие в опытной эксплуатации реализованных механизмов обмена и передачи информации и документов. |  | 1d? | 2014-01-30 | 2014-01-30 |  |  |  | 232d |  |  |  |  |
| 140 | 2.5.2 | Проведение приемочных испытаний |  | 1d? | 2014-01-30 | 2014-01-30 |  |  |  | 232d |  |  |  |  |
| 141 | 2.5.3 | **Подготовка отчетной документации** |  | 1d? | 2014-01-30 | 2014-01-30 |  |  |  | 232d |  |  |  |  |
| 142 | 2.5.3.1 | Дистрибутив механизмов обмена и передачи информации и документов, в котором реализованы доработки, зафиксированные в ходе опытной эксплуатации |  | 1d? | 2014-01-30 | 2014-01-30 |  |  |  | 232d |  |  |  |  |

| ID | WBS | Task | Type | Duration | Start | Finish | Predecessors | Total slack |
| --- | --- | --- | --- | --- | --- | --- | --- | --- |
| 143 | 2.5.3.2 | **Доработанные Инструкции по АРМ для следующих ролей:** |  | 1d? | 2014-01-30 | 2014-01-30 |  | 232d |
| 144 | 2.5.3.2.1 | делопроизводитель (сотрудник Административного управления) |  | 1d? | 2014-01-30 | 2014-01-30 |  | 232d |
| 145 | 2.5.3.2.2 | руководитель (организации, структурного подразделения, отдела) |  | 1d? | 2014-01-30 | 2014-01-30 |  | 232d |
| 146 | 2.5.3.2.3 | секретарь (ответственный за делопроизводство в подразделении) |  | 1d? | 2014-01-30 | 2014-01-30 |  | 232d |
| 147 | 2.5.3.2.4 | исполнитель (сотрудник отдела) |  | 1d? | 2014-01-30 | 2014-01-30 |  | 232d |
| 148 | 2.5.3.3 | Отчет о проведении опытной эксплуатации |  | 1d? | 2014-01-30 | 2014-01-30 |  | 232d |
| 149 | 2.5.3.4 | Журнал опытной эксплуатации |  | 1d? | 2014-01-30 | 2014-01-30 |  | 232d |
| 150 | 2.5.3.5 | Акт приемки в ОФАП Росстата |  | 1d? | 2014-01-30 | 2014-01-30 |  | 232d |
| 151 | 2.5.3.6 | Акт сдачи-приемки оказанных услуг |  | 1d? | 2014-01-30 | 2014-01-30 |  | 232d |
| 152 | 2.5.4 | Закрытие этапа | milestone | 0d | 2014-06-13 | 2014-06-13 | 137FS+4ew | 141d |
